# AlcancePasivos.v.1.0

Schedule from MS Project, 2017-02-01 to 2017-03-28.

## Calendars

- Estándar: Mon-Fri 09:00-13:00, 15:00-19:00; Sat-Sun off.

## Resources

| Resource |
| --- |
| DEV1 |
| v |
| Karl Navarro |

## Schedule

| ID | WBS | Task | Type | Duration | Start | Finish | Predecessors | Total slack | Constraint | Resources | Work |
| --- | --- | --- | --- | --- | --- | --- | --- | --- | --- | --- | --- |
| 1 | 1 | **Pasivos** |  | 40d | 2017-02-01 | 2017-03-28 |  | 0d |  |  | 320h |
| 2 | 1.1 | **Análisis** |  | 4d | 2017-02-01 | 2017-02-06 |  | 0d |  |  | 32h |
| 3 | 1.1.1 | Análisis del proceso actual y optimización |  | 3d | 2017-02-01 | 2017-02-03 |  | 0d |  | DEV1 | 24h |
| 4 | 1.1.2 | Generar documento especificación funcional (DEF) |  | 1d | 2017-02-06 | 2017-02-06 | 3 | 0d |  | DEV1 | 8h |
| 5 | 1.2 | **Desarrollo** |  | 36d | 2017-02-07 | 2017-03-28 |  | 0d |  |  | 288h |
| 6 | 1.2.1 | Cambio front-end |  | 2d | 2017-02-07 | 2017-02-08 | 4 | 0d |  | DEV1 | 16h |
| 7 | 1.2.2 | Tablero de filtro post carga stock_bf |  | 4d | 2017-02-09 | 2017-02-14 | 6 | 0d |  | DEV1 | 32h |
| 8 | 1.2.3 | **Cambios CTS actual** |  | 11.5d | 2017-02-15 | 2017-03-02 |  | 0d |  |  | 92h |
| 9 | 1.2.3.1 | Análisis stock_bf y columnas actuales |  | 2d | 2017-02-15 | 2017-02-16 | 7 | 0d |  | DEV1 | 16h |
| 10 | 1.2.3.2 | Validación origen de datos para CORP y EXT |  | 1d | 2017-02-17 | 2017-02-17 | 9 | 0d |  | DEV1 | 8h |
| 11 | 1.2.3.3 | Modificación procedimiento para árbol de decisiones SOLES |  | 2d | 2017-02-20 | 2017-02-21 | 10 | 0d | finish no earlier than 2017-02-01 | DEV1 | 16h |
| 12 | 1.2.3.4 | Modificación procedimiento para árbol de decisiones DÓLARES |  | 2d | 2017-02-22 | 2017-02-23 | 11 | 0d |  | DEV1 | 16h |
| 13 | 1.2.3.5 | Análisis de columnas extras para salida CTS |  | 2d | 2017-02-24 | 2017-02-27 | 12 | 0d |  | DEV1 | 16h |
| 14 | 1.2.3.6 | Optimización de reporte salida CTS |  | 1d | 2017-02-28 | 2017-02-28 | 13 | 0d | finish no earlier than 2017-02-02 | DEV1 | 8h |
| 15 | 1.2.3.7 | Pruebas y validación de datos |  | 1d | 2017-03-01 | 2017-03-01 | 14 | 0d |  | DEV1 | 8h |
| 16 | 1.2.3.8 | Despliegue de la solución |  | 0.5d | 2017-03-02 | 2017-03-02 | 15 | 0d |  | DEV1 | 4h |
| 17 | 1.2.4 | Sprint 1 | milestone | 0d | 2017-03-02 | 2017-03-02 | 16 | 0d |  | DEV1 |  |
| 18 | 1.2.5 | **CTS Nuevo** |  | 11.5d | 2017-03-02 | 2017-03-17 |  | 0d |  |  | 92h |
| 19 | 1.2.5.1 | Carga Registro de prod y tasas CTS |  | 1d | 2017-03-02 | 2017-03-03 | 17 | 0d |  | DEV1 | 8h |
| 20 | 1.2.5.2 | Mantenimiento Registro de prod y tasas CTS |  | 2d | 2017-03-03 | 2017-03-07 | 19 | 0d | finish no earlier than 2017-02-02 | DEV1 | 16h |
| 21 | 1.2.5.3 | Modificación procedimiento para árbol de decisiones SOLES |  | 2d | 2017-03-07 | 2017-03-09 | 20 | 0d | finish no earlier than 2017-02-01 | DEV1 | 16h |
| 22 | 1.2.5.4 | Modificación procedimiento para árbol de decisiones DÓLARES |  | 2d | 2017-03-09 | 2017-03-13 | 21 | 0d |  | DEV1 | 16h |
| 23 | 1.2.5.5 | Análisis de columnas extras para salida CTS |  | 1d | 2017-03-13 | 2017-03-14 | 22 | 0d |  | DEV1 | 8h |
| 24 | 1.2.5.6 | Optimización de reporte salida CTS |  | 2d | 2017-03-14 | 2017-03-16 | 23 | 0d | finish no earlier than 2017-02-02 | DEV1 | 16h |
| 25 | 1.2.5.7 | Pruebas y validación de datos |  | 1d | 2017-03-16 | 2017-03-17 | 24 | 0d |  | DEV1 | 8h |
| 26 | 1.2.5.8 | Despliegue de la solución |  | 0.5d | 2017-03-17 | 2017-03-17 | 25 | 0d |  | DEV1 | 4h |
| 27 | 1.2.6 | Sprint 2 | milestone | 0d | 2017-03-17 | 2017-03-17 | 26 | 0d |  | DEV1 |  |

| ID | WBS | Task | Duration | Start | Finish | Predecessors | Total slack | Free slack | Resources | Work |
| --- | --- | --- | --- | --- | --- | --- | --- | --- | --- | --- |
| 28 | 1.2.7 | **Pruebas y validación de datos** | 7d | 2017-03-20 | 2017-03-28 |  | 0d |  |  | 56h |
| 29 | 1.2.7.1 | Despliegue e implementación servidor BI | 1d | 2017-03-20 | 2017-03-20 | 27 | 0d |  | DEV1 | 8h |
| 30 | 1.2.7.2 | Pruebas validación usuario final | 5d | 2017-03-21 | 2017-03-27 | 29 | 0d |  | DEV1 | 40h |
| 31 | 1.2.7.3 | Manual de usuario e implementación de procesos | 1d | 2017-03-28 | 2017-03-28 | 30 | 0d |  | DEV1 | 8h |
| 32 | 2 | **Gestión del proyecto** | 39d | 2017-02-01 | 2017-03-27 |  | 1d |  |  | 93.6h |
| 33 | 2.1 | Reunión de Inicio | 1d | 2017-02-01 | 2017-02-01 |  | 1d | 0d | Karl Navarro [30%] | 2.4h |
| 34 | 2.2 | Seguimiento y control | 37d | 2017-02-02 | 2017-03-24 | 33 | 1d | 0d | Karl Navarro [30%] | 88.8h |
| 35 | 2.3 | Cierre | 1d | 2017-03-27 | 2017-03-27 | 34 | 1d |  | Karl Navarro [30%] | 2.4h |
