# AlcancePasivos.v.1.0

Schedule from MS Project, 2017-02-01 to 2017-03-31, A marks actual dates.

## Calendars

- Estándar: Mon-Fri 09:00-13:00, 15:00-19:00; Sat-Sun off.

## Resources

| Resource |
| --- |
| DEV1 |
| v |
| Karl Navarro |

## Schedule

| ID | WBS | Task | Type | Duration | Start | Finish | Predecessors | Complete | Remaining | Total slack | Constraint | Resources | Work | Actual work |
| --- | --- | --- | --- | --- | --- | --- | --- | --- | --- | --- | --- | --- | --- | --- |
| 1 | 1 | **Pasivos** |  | 40d | 2017-02-06 A | 2017-03-31 |  | 22% | 31.22d | 0d |  |  | 328h | 72h |
| 2 | 1.1 | **Análisis** |  | 4d | 2017-02-06 A | 2017-02-09 A |  | 100% |  |  |  |  | 32h | 32h |
| 3 | 1.1.1 | Análisis del proceso actual y optimización |  | 3d | 2017-02-06 A | 2017-02-08 A |  | 100% |  |  |  | DEV1 | 24h | 24h |
| 4 | 1.1.2 | Generar documento especificación funcional (DEF) |  | 1d | 2017-02-09 A | 2017-02-09 A | 3 | 100% |  |  |  | DEV1 | 8h | 8h |
| 5 | 1.2 | **Desarrollo** |  | 36d | 2017-02-10 A | 2017-03-31 |  | 14% | 31.14d | 0d |  |  | 296h | 40h |
| 6 | 1.2.1 | Cambio front-end |  | 3d | 2017-02-10 A | 2017-02-14 A | 4 | 100% |  |  |  | DEV1 | 24h | 24h |
| 7 | 1.2.2 | Mantenimiento de productos |  | 2d | 2017-02-14 A | 2017-02-15 A | 6 | 100% |  |  |  | DEV1 | 16h | 16h |
| 8 | 1.2.3 | Mantenimiento de asignación de productos |  | 2d | 2017-02-16 | 2017-02-17 | 7 |  |  | 0d |  | DEV1 | 16h |  |
| 9 | 1.2.4 | **Cambios CTS actual** |  | 11.5d | 2017-02-20 | 2017-03-07 |  |  |  | 0d |  |  | 92h |  |
| 10 | 1.2.4.1 | Análisis stock_bf y columnas actuales |  | 2d | 2017-02-20 | 2017-02-21 | 8 |  |  | 0d |  | DEV1 | 16h |  |
| 11 | 1.2.4.2 | Validación origen de datos para CORP y EXT |  | 1d | 2017-02-22 | 2017-02-22 | 10 |  |  | 0d |  | DEV1 | 8h |  |
| 12 | 1.2.4.3 | Modificación procedimiento para árbol de decisiones SOLES |  | 2d | 2017-02-23 | 2017-02-24 | 11 |  |  | 0d | finish no earlier than 2017-02-01 | DEV1 | 16h |  |
| 13 | 1.2.4.4 | Modificación procedimiento para árbol de decisiones DÓLARES |  | 2d | 2017-02-27 | 2017-02-28 | 12 |  |  | 0d |  | DEV1 | 16h |  |
| 14 | 1.2.4.5 | Análisis de columnas extras para salida CTS |  | 2d | 2017-03-01 | 2017-03-02 | 13 |  |  | 0d |  | DEV1 | 16h |  |
| 15 | 1.2.4.6 | Optimización de reporte salida CTS |  | 1d | 2017-03-03 | 2017-03-03 | 14 |  |  | 0d | finish no earlier than 2017-02-02 | DEV1 | 8h |  |
| 16 | 1.2.4.7 | Pruebas y validación de datos |  | 1d | 2017-03-06 | 2017-03-06 | 15 |  |  | 0d |  | DEV1 | 8h |  |
| 17 | 1.2.4.8 | Despliegue de la solución |  | 0.5d | 2017-03-07 | 2017-03-07 | 16 |  |  | 0d |  | DEV1 | 4h |  |
| 18 | 1.2.5 | Sprint 1 | milestone | 0d | 2017-03-07 | 2017-03-07 | 17 |  |  | 0d |  | DEV1 |  |  |
| 19 | 1.2.6 | **CTS Nuevo** |  | 11.5d | 2017-03-07 | 2017-03-22 |  |  |  | 0d |  |  | 92h |  |
| 20 | 1.2.6.1 | Carga Registro de prod y tasas CTS |  | 1d | 2017-03-07 | 2017-03-08 | 18 |  |  | 0d |  | DEV1 | 8h |  |
| 21 | 1.2.6.2 | Mantenimiento Registro de prod y tasas CTS |  | 2d | 2017-03-08 | 2017-03-10 | 20 |  |  | 0d | finish no earlier than 2017-02-02 | DEV1 | 16h |  |
| 22 | 1.2.6.3 | Modificación procedimiento para árbol de decisiones SOLES |  | 2d | 2017-03-10 | 2017-03-14 | 21 |  |  | 0d | finish no earlier than 2017-02-01 | DEV1 | 16h |  |
| 23 | 1.2.6.4 | Modificación procedimiento para árbol de decisiones DÓLARES |  | 2d | 2017-03-14 | 2017-03-16 | 22 |  |  | 0d |  | DEV1 | 16h |  |
| 24 | 1.2.6.5 | Análisis de columnas extras para salida CTS |  | 1d | 2017-03-16 | 2017-03-17 | 23 |  |  | 0d |  | DEV1 | 8h |  |
| 25 | 1.2.6.6 | Optimización de reporte salida CTS |  | 2d | 2017-03-17 | 2017-03-21 | 24 |  |  | 0d | finish no earlier than 2017-02-02 | DEV1 | 16h |  |
| 26 | 1.2.6.7 | Pruebas y validación de datos |  | 1d | 2017-03-21 | 2017-03-22 | 25 |  |  | 0d |  | DEV1 | 8h |  |
| 27 | 1.2.6.8 | Despliegue de la solución |  | 0.5d | 2017-03-22 | 2017-03-22 | 26 |  |  | 0d |  | DEV1 | 4h |  |
| 28 | 1.2.7 | Sprint 2 | milestone | 0d | 2017-03-22 | 2017-03-22 | 27 |  |  | 0d |  | DEV1 |  |  |

| ID | WBS | Task | Duration | Start | Finish | Predecessors | Total slack | Free slack | Resources | Work |
| --- | --- | --- | --- | --- | --- | --- | --- | --- | --- | --- |
| 29 | 1.2.8 | **Pruebas y validación de datos** | 7d | 2017-03-23 | 2017-03-31 |  | 0d |  |  | 56h |
| 30 | 1.2.8.1 | Despliegue e implementación servidor BI | 1d | 2017-03-23 | 2017-03-23 | 28 | 0d |  | DEV1 | 8h |
| 31 | 1.2.8.2 | Pruebas validación usuario final | 5d | 2017-03-24 | 2017-03-30 | 30 | 0d |  | DEV1 | 40h |
| 32 | 1.2.8.3 | Manual de usuario e implementación de procesos | 1d | 2017-03-31 | 2017-03-31 | 31 | 0d |  | DEV1 | 8h |
| 33 | 2 | **Gestión del proyecto** | 39d | 2017-02-01 | 2017-03-27 |  | 4d |  |  | 93.6h |
| 34 | 2.1 | Reunión de Inicio | 1d | 2017-02-01 | 2017-02-01 |  | 4d | 0d | Karl Navarro [30%] | 2.4h |
| 35 | 2.2 | Seguimiento y control | 37d | 2017-02-02 | 2017-03-24 | 34 | 4d | 0d | Karl Navarro [30%] | 88.8h |
| 36 | 2.3 | Cierre | 1d | 2017-03-27 | 2017-03-27 | 35 | 4d |  | Karl Navarro [30%] | 2.4h |
